# addSchedule01 (8)

How a schedule from MS Project changed from version to version. A marks actual dates.

## Version 1 (saved 2025-07-18, file centroSchedule1.mpp)

| ID | WBS | Task | Duration | Start | Finish | Predecessors | Complete | Total float |
| --- | --- | --- | --- | --- | --- | --- | --- | --- |
| 1 | 1 | **addSchedule01** | 128d | 2025-01-23 A | 2025-07-21 |  | 9% | 0d |
| 2 | 1.1 | **Bldg 11 Building** | 122d | 2025-01-23 | 2025-07-11 |  |  | 6d |
| 3 | 1.1.1 | **Foundation** | 27d | 2025-01-23 | 2025-02-28 |  |  | 6d |
| 4 |  | Building permit | 0d | 2025-02-10 | 2025-02-10 |  |  | 0d |
| 5 |  | Building PAD Prep, Land Survey & Excavation | 3d | 2025-01-23 | 2025-01-27 | 4SS-12d |  | 6d |
| 6 |  | Level preparation (Level Grouting) | 2d | 2025-01-28 | 2025-01-29 | 5 |  | 6d |
| 7 |  | Precast Footing + Grouting (Stem wall) | 6d | 2025-01-30 | 2025-02-06 | 6 |  | 6d |
| 8 |  | Back fill upto 1st lift | 2d | 2025-02-07 | 2025-02-10 | 7 |  | 6d |
| 9 |  | Under Ground Connection (Backfill till level + Piping) | 4d | 2025-02-11 | 2025-02-14 | 8 |  | 6d |
| 10 |  | Inspection - UG plumbing (City) | 1d | 2025-02-14 | 2025-02-14 | 9FF |  | 6d |
| 11 |  | Backfilling + Compaction + ATT | 3d | 2025-02-17 | 2025-02-19 | 10 |  | 6d |
| 12 |  | Vapour Barrier + Add rebar fixing | 5d | 2025-02-20 | 2025-02-26 | 11 |  | 6d |
| 13 |  | Inspection - Rebar (PLF) | 1d | 2025-02-27 | 2025-02-27 | 12 |  | 6d |
| 14 |  | Slab on Grade concreting | 1d | 2025-02-28 | 2025-02-28 | 13 |  | 6d |
| 15 | 1.1.2 | **Precast Installation** | 16d | 2025-03-03 | 2025-03-24 |  |  | 6d |
| 16 |  | L-1 Wall Erection + Alignment | 4d | 2025-03-03 | 2025-03-06 | 14 |  | 6d |
| 17 |  | Inspection - Structure (PLF) | 1d | 2025-03-06 | 2025-03-06 | 16FF |  | 97d |
| 18 |  | Beam + Slab + Staircase | 4d | 2025-03-07 | 2025-03-12 | 16 |  | 6d |
| 19 |  | Grouting & Welding | 2d | 2025-03-07 | 2025-03-10 | 16 |  | 95d |
| 20 |  | Alignment + Topping Slab Rebar fixing | 3d | 2025-03-13 | 2025-03-17 | 18 |  | 6d |
| 21 |  | Inspection - Structure (PLF) | 1d | 2025-03-17 | 2025-03-17 | 20FF |  | 6d |
| 22 |  | Topping Slab Concrete | 1d | 2025-03-18 | 2025-03-18 | 21 |  | 6d |
| 23 |  | L2 Wall +POD + Allignment | 4d | 2025-03-19 | 2025-03-24 | 22 |  | 6d |
| 24 |  | Grouting & Welding | 1d | 2025-03-24 | 2025-03-24 | 23FF |  | 85d |
| 25 |  | Inspection - Structure (PLF) | 1d | 2025-03-24 | 2025-03-24 | 24FF |  | 85d |
| 26 | 1.1.3 | **Roof** | 15d | 2025-03-21 | 2025-04-10 |  |  | 6d |
| 27 |  | Wood roof installation | 3d | 2025-03-21 | 2025-03-25 | 23FF+1d |  | 6d |
| 28 |  | Truss facia & Bracing | 3d | 2025-03-21 | 2025-03-25 | 27FF |  | 84d |
| 29 |  | Sheating Laying | 3d | 2025-03-26 | 2025-03-28 | 27 |  | 6d |
| 30 |  | Inspection - Roof & Sheathing (PLF) | 1d | 2025-03-28 | 2025-03-28 | 29FF |  | 6d |
| 31 |  | Base Sheet (Tin Cap) | 2d | 2025-03-31 | 2025-04-01 | 30 |  | 6d |
| 32 |  | Inspection For Tin cap (City) | 1d | 2025-04-01 | 2025-04-01 | 31FF |  | 6d |
| 33 |  | Roof Shingles | 3d | 2025-04-02 | 2025-04-04 | 32 |  | 62d |
| 34 |  | Inspection - Inprogress for Shingles (City) | 1d | 2025-04-04 | 2025-04-04 | 33FF |  | 62d |
| 35 |  | Roof Soffit | 4d | 2025-04-07 | 2025-04-10 | 34 |  | 62d |
| 36 |  | Inspection - Roof final ( City) | 1d | 2025-04-10 | 2025-04-10 | 35FF |  | 62d |
| 37 | 1.1.4 | **External Finishes** | 3d | 2025-04-11 | 2025-04-15 |  |  | 69d |
| 38 |  | External surface prepartion | 1d | 2025-04-11 | 2025-04-11 | 35 |  | 69d |
| 39 |  | Exterior primer & 1st coat paint | 1d | 2025-04-14 | 2025-04-14 | 38 |  | 69d |
| 40 |  | Façade tle installation | 1d | 2025-04-15 | 2025-04-15 | 39 |  | 69d |
| 41 | 1.1.5 | **Internal Finishes** | 72d | 2025-04-02 | 2025-07-10 |  |  | 6d |
| 42 | 1.1.5.1 | **Window & Sliding door fixing** | 13d | 2025-04-02 | 2025-04-18 |  |  | 6d |
| 43 |  | Wood buck fixing | 4d | 2025-04-02 | 2025-04-07 | 32 |  | 6d |
| 44 |  | Inspection for buck (City) | 1d | 2025-04-07 | 2025-04-07 | 43FF |  | 66d |
| 45 |  | Window & Sliding door frame fixing | 4d | 2025-04-08 | 2025-04-11 | 44 |  | 66d |
| 46 |  | Exterior door installation | 4d | 2025-04-08 | 2025-04-11 | 45SS |  | 66d |
| 47 |  | Inspection - Window, Sliding door inprogress ( City) | 1d | 2025-04-14 | 2025-04-14 | 46 |  | 66d |
| 48 |  | Garage door Installation | 4d | 2025-04-14 | 2025-04-17 | 47SS |  | 66d |
| 49 |  | Inspection - Garage door inprogress (City) | 1d | 2025-04-18 | 2025-04-18 | 48 |  | 66d |
| 50 | 1.1.5.2 | **Drywall & MEP Rough** | 27d | 2025-04-03 | 2025-05-09 |  |  | 6d |
| 51 |  | Drywall framing fixing | 4d | 2025-04-03 | 2025-04-08 | 43SS+1d |  | 6d |
| 52 |  | Mechanical Rough | 4d | 2025-04-04 | 2025-04-09 | 51SS+1d |  | 6d |
| 53 |  | Plumbing Rough | 4d | 2025-04-08 | 2025-04-11 | 52SS+2d |  | 6d |
| 54 |  | Electrical Rough | 4d | 2025-04-10 | 2025-04-15 | 53SS+2d |  | 6d |
| 55 |  | Inspection-MEP Rough (City) | 1d | 2025-04-16 | 2025-04-16 | 54 |  | 6d |
| 56 |  | Inspection- Drywall framing & Fire penetration (City) | 1d | 2025-04-17 | 2025-04-17 | 55 |  | 6d |
| 57 |  | Drywall Insulation | 4d | 2025-04-18 | 2025-04-23 | 56 |  | 6d |
| 58 |  | Inspection - Drywall Insulation (City) | 1d | 2025-04-24 | 2025-04-24 | 57 |  | 6d |
| 59 |  | Drywall Board fixing | 4d | 2025-04-25 | 2025-04-30 | 58 |  | 6d |
| 60 |  | Inspection - Drywall screw (City) | 1d | 2025-05-01 | 2025-05-01 | 59 |  | 6d |
| 61 |  | Tape & Mud | 3d | 2025-05-02 | 2025-05-06 | 60 |  | 6d |
| 62 |  | Textue & finish | 5d | 2025-05-05 | 2025-05-09 | 61SS+1d |  | 6d |
| 63 | 1.1.5.3 | **Interior Paint** | 2d | 2025-05-12 | 2025-05-13 |  |  | 6d |
| 64 |  | Primer & 1st hand application | 2d | 2025-05-12 | 2025-05-13 | 62 |  | 6d |
| 65 | 1.1.5.4 | **Flooring & Baseboard** | 7d | 2025-05-14 | 2025-05-22 |  |  | 6d |
| 66 |  | Floor tile fixing | 7d | 2025-05-14 | 2025-05-22 | 64 |  | 6d |
| 67 |  | Stair tile fixiing | 7d | 2025-05-14 | 2025-05-22 | 66SS |  | 41d |
| 68 | 1.1.5.5 | **Interior door** | 8d | 2025-05-16 | 2025-05-27 |  |  | 39d |
| 69 |  | Interior door & Hardware installation | 6d | 2025-05-16 | 2025-05-23 | 79SS |  | 39d |
| 70 |  | Baseboard fixing | 8d | 2025-05-16 | 2025-05-27 | 69FF+2d |  | 39d |

| ID | WBS | Task | Duration | Start | Finish | Predecessors | Complete | Total float |
| --- | --- | --- | --- | --- | --- | --- | --- | --- |
| 71 | 1.1.5.6 | **Balcony waterproofing** | 4d | 2025-05-23 | 2025-05-28 |  |  | 36d |
| 72 |  | 1st coat of water proofing | 2d | 2025-05-23 | 2025-05-26 | 66 |  | 36d |
| 73 |  | 2nd coat water proofing | 1d | 2025-05-27 | 2025-05-27 | 72 |  | 36d |
| 74 |  | Inspection | 1d | 2025-05-28 | 2025-05-28 | 73 |  | 36d |
| 75 | 1.1.5.7 | **Railing** | 6d | 2025-05-23 | 2025-05-30 |  |  | 36d |
| 76 |  | Staircase rail fixing | 1d | 2025-05-23 | 2025-05-23 | 67 |  | 41d |
| 77 |  | External rail fixing | 2d | 2025-05-29 | 2025-05-30 | 74 |  | 36d |
| 78 | 1.1.5.8 | **Casegoods & Appliances** | 14d | 2025-05-16 | 2025-06-04 |  |  | 6d |
| 79 |  | Kitchen cabinet installation | 8d | 2025-05-16 | 2025-05-27 | 66SS+2d |  | 6d |
| 80 |  | Kitchen countertop | 3d | 2025-05-26 | 2025-05-28 | 79FF+1d |  | 6d |
| 81 |  | Temp test | 4d | 2025-05-29 | 2025-06-03 | 80 |  | 6d |
| 82 |  | Inspection | 1d | 2025-06-04 | 2025-06-04 | 81 |  | 6d |
| 83 |  | Bedroom closet installation | 6d | 2025-05-23 | 2025-05-30 | 66 |  | 36d |
| 84 |  | Kitchen & Laundry appliances installation | 3d | 2025-05-27 | 2025-05-29 | 80FF+1d |  | 37d |
| 85 |  | Rough cleaning | 1d | 2025-05-28 | 2025-05-28 | 80FF |  | 38d |
| 86 |  | Attic Insulation | 1d | 2025-05-27 | 2025-05-27 | 84SS |  | 39d |
| 87 |  | Blower test | 1d | 2025-05-29 | 2025-05-29 | 80 |  | 37d |
| 88 | 1.1.5.9 | **MEP Final & Final paint** | 44d | 2025-05-12 | 2025-07-10 |  |  | 7d |
| 89 |  | Mechanical final | 4d | 2025-06-20 | 2025-06-25 | 110 |  | 18d |
| 90 |  | Electrical final | 4d | 2025-06-20 | 2025-06-25 | 110 |  | 6d |
| 91 |  | Plumbing final | 4d | 2025-06-24 | 2025-06-27 | 90SS+2d |  | 6d |
| 92 |  | Window, Roof, Door - Final inspection | 1d | 2025-05-12 | 2025-05-12 | 62 |  | 50d |
| 93 |  | Final coat | 1d | 2025-06-30 | 2025-06-30 | 91 |  | 6d |
| 94 |  | Inspection - MEP final (city) | 1d | 2025-07-01 | 2025-07-01 | 93 |  | 6d |
| 95 |  | Building final | 1d | 2025-07-02 | 2025-07-02 | 94 |  | 6d |
| 96 |  | Rough Cleaning | 4d | 2025-07-03 | 2025-07-08 | 95 |  | 6d |
| 97 |  | 1st model home FQC | 1d | 2025-07-09 | 2025-07-09 | 96 |  | 6d |
| 98 |  | 2nd model home FQC | 1d | 2025-07-10 | 2025-07-10 | 97 |  | 6d |
| 99 |  | 1st Model home completion HO to sales | 1d | 2025-07-11 | 2025-07-11 | 98 |  | 6d |
| 100 | 1.1.7 | **External Development** | 34d | 2025-04-11 | 2025-05-28 |  |  | 38d |
| 101 |  | Sewer line from Unit to main line | 5d | 2025-04-11 | 2025-04-17 | 36 |  | 62d |
| 102 |  | FPL line | 5d | 2025-04-18 | 2025-04-24 | 101 |  | 62d |
| 103 |  | Side walk | 4d | 2025-05-14 | 2025-05-19 | 64 |  | 33d |
| 104 |  | Landscaping | 5d | 2025-05-20 | 2025-05-26 | 103 |  | 38d |
| 105 |  | Rain gutter fixing | 1d | 2025-05-27 | 2025-05-27 | 104 |  | 38d |
| 106 |  | Exterior paint final coat | 1d | 2025-05-28 | 2025-05-28 | 105 |  | 38d |
| 107 | 1.1.8 | **CO** | 32d | 2025-05-27 | 2025-07-09 |  |  | 8d |
| 108 |  | Final soil treatment | 1d | 2025-05-27 | 2025-05-27 | 104 |  | 38d |
| 109 |  | Final Elevation & Final survey | 1d | 2025-05-28 | 2025-05-28 | 108 |  | 38d |
| 110 |  | Electrical meter fixing | 1d | 2025-06-19 | 2025-06-19 | 82FS+10d |  | 6d |
| 111 |  | Water meter fixing | 1d | 2025-05-27 | 2025-05-27 | 103FS+5d |  | 33d |
| 112 |  | CO application submission | 1d | 2025-07-02 | 2025-07-02 | 94 |  | 7d |
| 113 |  | CO approval | 5d | 2025-07-03 | 2025-07-09 | 112 |  | 7d |
| 114 | 1.1.9 | **Hnad over to sales** | 15d | 2025-06-20 | 2025-07-10 |  |  | 7d |
| 115 |  | Punch list | 1d | 2025-07-02 | 2025-07-02 | 94 |  | 9d |
| 116 |  | Final cleaning | 4d | 2025-07-03 | 2025-07-08 | 115 |  | 9d |
| 117 |  | FQC approval | 5d | 2025-06-20 | 2025-06-26 | 111, 110 |  | 16d |
| 118 |  | Handing over to sales | 1d | 2025-07-10 | 2025-07-10 | 113, 117 |  | 7d |
| 119 | 1.2 | **Bldg 9 Building** | 127d | 2025-01-23 A | 2025-07-18 |  | 22% | 1d |
| 120 | 1.2.1 | **Foundation** | 27d | 2025-01-23 | 2025-02-28 |  |  | 1.75d |
| 121 |  | Building permit | 0d | 2025-02-10 | 2025-02-10 |  |  | 0d |
| 122 |  | Building PAD Prep, Land Survey & Excavation | 3d | 2025-01-23 | 2025-01-27 | 121SS-12d |  | 1.75d |
| 123 |  | Level preparation (Level Grouting) | 2d | 2025-01-28 | 2025-01-29 | 122 |  | 1.75d |
| 124 |  | Precast Footing + Grouting (Stem wall) | 6d | 2025-01-30 | 2025-02-06 | 123 |  | 1.75d |
| 125 |  | Back fill upto 1st lift | 2d | 2025-02-07 | 2025-02-10 | 124 |  | 1.75d |
| 126 |  | Under Ground Connection (Backfill till level + Piping) | 4d | 2025-02-11 | 2025-02-14 | 125 |  | 1.75d |
| 127 |  | Inspection - UG plumbing (City) | 1d | 2025-02-14 | 2025-02-14 | 126FF |  | 1.75d |
| 128 |  | Backfilling + Compaction + ATT | 3d | 2025-02-17 | 2025-02-19 | 127 |  | 1.75d |
| 129 |  | Vapour Barrier + Add rebar fixing | 5d | 2025-02-20 | 2025-02-26 | 128 |  | 1.75d |
| 130 |  | Inspection - Rebar (PLF) | 1d | 2025-02-27 | 2025-02-27 | 129 |  | 1.75d |
| 131 |  | Slab on Grade concreting | 1d | 2025-02-28 | 2025-02-28 | 130 |  | 1.75d |
| 132 | 1.2.2 | **Precast Installation** | 55d | 2025-03-01 A | 2025-05-16 |  | 21% | 46d |
| 133 |  | L-1 Wall Erection + Alignment | 4d | 2025-03-03 | 2025-03-06 | 131 |  | 1.75d |
| 134 |  | Inspection - Structure (PLF) | 1d | 2025-03-06 | 2025-03-06 | 133FF |  | 97d |
| 135 |  | Beam + Slab + Staircase | 4d | 2025-03-07 | 2025-03-12 | 133 |  | 1.75d |
| 136 |  | Grouting & Welding | 2d | 2025-03-07 | 2025-03-10 | 133 |  | 95d |
| 137 |  | Alignment + Topping Slab Rebar fixing | 3d | 2025-03-13 | 2025-03-17 | 135 |  | 1.75d |
| 138 |  | Inspection - Structure (PLF) | 1d | 2025-03-17 | 2025-03-17 | 137FF |  | 1.75d |
| 139 |  | Topping Slab Concrete | 1d | 2025-03-18 | 2025-03-18 | 138 |  | 1.75d |
| 140 |  | L2 Wall +POD + Allignment | 55d | 2025-03-01 A | 2025-05-16 | 139 | 25% | 45d |

| ID | WBS | Task | Duration | Start | Finish | Predecessors | Complete | Total float |
| --- | --- | --- | --- | --- | --- | --- | --- | --- |
| 141 |  | Grouting & Welding | 2d | 2025-03-07 A | 2025-03-10 A | 140FF | 100% |  |
| 142 |  | Inspection - Structure (PLF) | 1d | 2025-03-10 | 2025-03-10 | 141FF |  | 95d |
| 143 | 1.2.3 | **Roof** | 44d | 2025-03-19 A | 2025-05-19 |  | 50% | 45d |
| 144 |  | Wood roof installation | 44d | 2025-03-19 A | 2025-05-19 | 140FF+1d | 1% | 45d |
| 145 |  | Truss facia & Bracing | 41d | 2025-03-24 A | 2025-05-19 | 144FF | 99% | 45d |
| 146 |  | Sheating Laying | 3d | 2025-03-26 A | 2025-03-28 A | 144 | 100% |  |
| 147 |  | Inspection - Roof & Sheathing (PLF) | 3d | 2025-04-02 A | 2025-04-04 A | 146FF | 100% |  |
| 148 |  | Base Sheet (Tin Cap) | 2d | 2025-04-07 | 2025-04-08 | 147 |  | 1d |
| 149 |  | Inspection For Tin cap (City) | 1d | 2025-04-09 A | 2025-04-09 | 148FF |  | -1.71d |
| 150 |  | Roof Shingles | 3d | 2025-04-10 A | 2025-04-14 | 149 | 99% | 70d |
| 151 |  | Inspection - Inprogress for Shingles (City) | 1d | 2025-04-14 A | 2025-04-14 A | 150FF | 100% |  |
| 152 |  | Roof Soffit | 4d | 2025-04-15 | 2025-04-18 | 151 |  | 4.25d |
| 153 |  | Inspection - Roof final ( City) | 1d | 2025-04-18 | 2025-04-18 | 152FF |  | 56d |
| 154 | 1.2.4 | **External Finishes** | 10d | 2025-04-21 A | 2025-05-02 |  | 71% | 56d |
| 155 |  | External surface prepartion | 1d | 2025-04-21 | 2025-04-21 | 152 |  | 4.25d |
| 156 |  | Exterior primer & 1st coat paint | 1d | 2025-04-28 A | 2025-04-28 | 155 | 25% | 60d |
| 157 |  | Façade tle installation | 4d | 2025-04-29 A | 2025-05-02 A | 156 | 100% |  |
| 158 | 1.2.5 | **Internal Finishes** | 72d | 2025-04-10 A | 2025-07-18 |  | 11% | 1d |
| 159 | 1.2.5.1 | **Window & Sliding door fixing** | 13d | 2025-04-10 | 2025-04-28 |  |  | -1.71d |
| 160 |  | Wood buck fixing | 4d | 2025-04-10 | 2025-04-15 | 149 |  | -1.71d |
| 161 |  | Inspection for buck (City) | 1d | 2025-04-15 | 2025-04-15 | 160FF |  | 60d |
| 162 |  | Window & Sliding door frame fixing | 4d | 2025-04-16 | 2025-04-21 | 161 |  | 60d |
| 163 |  | Exterior door installation | 4d | 2025-04-16 | 2025-04-21 | 162SS |  | 60d |
| 164 |  | Inspection - Window, Sliding door inprogress ( City) | 1d | 2025-04-22 | 2025-04-22 | 163 |  | 60d |
| 165 |  | Garage door Installation | 4d | 2025-04-22 | 2025-04-25 | 164SS |  | 60d |
| 166 |  | Inspection - Garage door inprogress (City) | 1d | 2025-04-28 | 2025-04-28 | 165 |  | 60d |
| 167 | 1.2.5.2 | **Drywall & MEP Rough** | 27d | 2025-04-11 | 2025-05-19 |  |  | -1.71d |
| 168 |  | Drywall framing fixing | 4d | 2025-04-11 | 2025-04-16 | 160SS+1d |  | -1.71d |
| 169 |  | Mechanical Rough | 4d | 2025-04-14 | 2025-04-17 | 168SS+1d |  | -1.71d |
| 170 |  | Plumbing Rough | 4d | 2025-04-16 | 2025-04-21 | 169SS+2d |  | -1.71d |
| 171 |  | Electrical Rough | 4d | 2025-04-18 | 2025-04-23 | 170SS+2d |  | -1.71d |
| 172 |  | Inspection-MEP Rough (City) | 1d | 2025-04-24 | 2025-04-24 | 171 |  | -1.71d |
| 173 |  | Inspection- Drywall framing & Fire penetration (City) | 1d | 2025-04-25 | 2025-04-25 | 172 |  | -1.71d |
| 174 |  | Drywall Insulation | 4d | 2025-04-28 | 2025-05-01 | 173 |  | -1.71d |
| 175 |  | Inspection - Drywall Insulation (City) | 1d | 2025-05-02 | 2025-05-02 | 174 |  | -1.71d |
| 176 |  | Drywall Board fixing | 4d | 2025-05-05 | 2025-05-08 | 175 |  | -1.71d |
| 177 |  | Inspection - Drywall screw (City) | 1d | 2025-05-09 | 2025-05-09 | 176 |  | -1.71d |
| 178 |  | Tape & Mud | 3d | 2025-05-12 | 2025-05-14 | 177 |  | -1.71d |
| 179 |  | Textue & finish | 5d | 2025-05-13 | 2025-05-19 | 178SS+1d |  | -1.71d |
| 180 | 1.2.5.3 | **Interior Paint** | 2d | 2025-05-20 | 2025-05-21 |  |  | -1.71d |
| 181 |  | Primer & 1st hand application | 2d | 2025-05-20 | 2025-05-21 | 179 |  | -1.71d |
| 182 | 1.2.5.4 | **Flooring & Baseboard** | 13d | 2025-05-14 A | 2025-05-30 |  | 21% | 35d |
| 183 |  | Floor tile fixing | 7d | 2025-05-22 | 2025-05-30 | 181 |  | -1.71d |
| 184 |  | Stair tile fixiing | 13d | 2025-05-14 A | 2025-05-30 | 183SS | 33% | 35d |
| 185 | 1.2.5.5 | **Interior door** | 7d | 2025-05-22 A | 2025-05-30 A |  | 100% |  |
| 186 |  | Interior door & Hardware installation | 4d | 2025-05-26 A | 2025-05-29 A | 196SS | 100% |  |
| 187 |  | Baseboard fixing | 7d | 2025-05-22 A | 2025-05-30 A | 186FF+2d | 100% |  |
| 188 | 1.2.5.6 | **Balcony waterproofing** | 4d | 2025-06-02 | 2025-06-05 |  |  | 30d |
| 189 |  | 1st coat of water proofing | 2d | 2025-06-02 | 2025-06-03 | 183 |  | 30d |
| 190 |  | 2nd coat water proofing | 1d | 2025-06-04 | 2025-06-04 | 189 |  | 30d |
| 191 |  | Inspection | 1d | 2025-06-05 | 2025-06-05 | 190 |  | 30d |
| 192 | 1.2.5.7 | **Railing** | 6d | 2025-06-02 | 2025-06-09 |  |  | 30d |
| 193 |  | Staircase rail fixing | 1d | 2025-06-02 | 2025-06-02 | 184 |  | 35d |
| 194 |  | External rail fixing | 2d | 2025-06-06 | 2025-06-09 | 191 |  | 30d |
| 195 | 1.2.5.8 | **Casegoods & Appliances** | 14d | 2025-05-26 | 2025-06-12 |  |  | 1d |
| 196 |  | Kitchen cabinet installation | 8d | 2025-05-26 | 2025-06-04 | 183SS+2d |  | 1d |
| 197 |  | Kitchen countertop | 3d | 2025-06-03 | 2025-06-05 | 196FF+1d |  | 1d |
| 198 |  | Temp test | 4d | 2025-06-06 | 2025-06-11 | 197 |  | 1d |
| 199 |  | Inspection | 1d | 2025-06-12 | 2025-06-12 | 198 |  | 1d |
| 200 |  | Bedroom closet installation | 6d | 2025-06-02 | 2025-06-09 | 183 |  | 30d |
| 201 |  | Kitchen & Laundry appliances installation | 3d | 2025-06-04 | 2025-06-06 | 197FF+1d |  | 31d |
| 202 |  | Rough cleaning | 1d | 2025-06-05 | 2025-06-05 | 197FF |  | 32d |
| 203 |  | Attic Insulation | 1d | 2025-06-04 | 2025-06-04 | 201SS |  | 33d |
| 204 |  | Blower test | 1d | 2025-06-06 | 2025-06-06 | 197 |  | 31d |
| 205 | 1.2.5.9 | **MEP Final & Final paint** | 44d | 2025-05-20 | 2025-07-18 |  |  | 1d |
| 206 |  | Mechanical final | 4d | 2025-06-30 | 2025-07-03 | 226 |  | 12d |
| 207 |  | Electrical final | 4d | 2025-06-30 | 2025-07-03 | 226 |  | 1d |
| 208 |  | Plumbing final | 4d | 2025-07-02 | 2025-07-07 | 207SS+2d |  | 1d |
| 209 |  | Window, Roof, Door - Final inspection | 1d | 2025-05-20 | 2025-05-20 | 179 |  | 44d |
| 210 |  | Final coat | 1d | 2025-07-08 | 2025-07-08 | 208 |  | 1d |

| ID | WBS | Task | Duration | Start | Finish | Predecessors | Total float |
| --- | --- | --- | --- | --- | --- | --- | --- |
| 211 |  | Inspection - MEP final (city) | 1d | 2025-07-09 | 2025-07-09 | 210 | 1d |
| 212 |  | Building final | 1d | 2025-07-10 | 2025-07-10 | 211 | 1d |
| 213 |  | Rough Cleaning | 4d | 2025-07-11 | 2025-07-16 | 212 | 1d |
| 214 |  | 1st model home FQC | 1d | 2025-07-17 | 2025-07-17 | 213 | 1d |
| 215 |  | 2nd model home FQC | 1d | 2025-07-18 | 2025-07-18 | 214 | 1d |
| 216 | 1.2.6 | **External Development** | 34d | 2025-04-21 | 2025-06-05 |  | 32d |
| 217 |  | Sewer line from Unit to main line | 5d | 2025-04-21 | 2025-04-25 | 153 | 56d |
| 218 |  | FPL line | 5d | 2025-04-28 | 2025-05-02 | 217 | 56d |
| 219 |  | Side walk | 4d | 2025-05-22 | 2025-05-27 | 181 | 27d |
| 220 |  | Landscaping | 5d | 2025-05-28 | 2025-06-03 | 219 | 32d |
| 221 |  | Rain gutter fixing | 1d | 2025-06-04 | 2025-06-04 | 220 | 32d |
| 222 |  | Exterior paint final coat | 1d | 2025-06-05 | 2025-06-05 | 221 | 32d |
| 223 | 1.2.7 | **CO** | 32d | 2025-06-04 | 2025-07-17 |  | 2d |
| 224 |  | Final soil treatment | 1d | 2025-06-04 | 2025-06-04 | 220 | 32d |
| 225 |  | Final Elevation & Final survey | 1d | 2025-06-05 | 2025-06-05 | 224 | 32d |
| 226 |  | Electrical meter fixing | 1d | 2025-06-27 | 2025-06-27 | 199FS+10d | 1d |
| 227 |  | Water meter fixing | 1d | 2025-06-04 | 2025-06-04 | 219FS+5d | 27d |
| 228 |  | CO application submission | 1d | 2025-07-10 | 2025-07-10 | 211 | 1d |
| 229 |  | CO approval | 5d | 2025-07-11 | 2025-07-17 | 228 | 1d |
| 230 | 1.2.8 | **Hnad over to sales** | 15d | 2025-06-30 | 2025-07-18 |  | 1d |
| 231 |  | Punch list | 1d | 2025-07-10 | 2025-07-10 | 211 | 3d |
| 232 |  | Final cleaning | 4d | 2025-07-11 | 2025-07-16 | 231 | 3d |
| 233 |  | FQC approval | 5d | 2025-06-30 | 2025-07-04 | 227, 226 | 10d |
| 234 |  | Handing over to sales | 1d | 2025-07-18 | 2025-07-18 | 233, 229 | 1d |
| 235 | 1.3 | **Bldg 14 Building** | 128d | 2025-01-23 | 2025-07-21 |  | 0d |
| 236 | 1.3.1 | **Foundation** | 27d | 2025-01-23 | 2025-02-28 |  | 0d |
| 237 |  | Building permit | 0d | 2025-02-10 | 2025-02-10 |  | 0d |
| 238 |  | Building PAD Prep, Land Survey & Excavation | 3d | 2025-01-23 | 2025-01-27 | 237SS-12d | 0d |
| 239 |  | Level preparation (Level Grouting) | 2d | 2025-01-28 | 2025-01-29 | 238 | 0d |
| 240 |  | Precast Footing + Grouting (Stem wall) | 6d | 2025-01-30 | 2025-02-06 | 239 | 0d |
| 241 |  | Back fill upto 1st lift | 2d | 2025-02-07 | 2025-02-10 | 240 | 0d |
| 242 |  | Under Ground Connection (Backfill till level + Piping) | 4d | 2025-02-11 | 2025-02-14 | 241 | 0d |
| 243 |  | Inspection - UG plumbing (City) | 1d | 2025-02-14 | 2025-02-14 | 242FF | 0d |
| 244 |  | Backfilling + Compaction + ATT | 3d | 2025-02-17 | 2025-02-19 | 243 | 0d |
| 245 |  | Vapour Barrier + Add rebar fixing | 5d | 2025-02-20 | 2025-02-26 | 244 | 0d |
| 246 |  | Inspection - Rebar (PLF) | 1d | 2025-02-27 | 2025-02-27 | 245 | 0d |
| 247 |  | Slab on Grade concreting | 1d | 2025-02-28 | 2025-02-28 | 246 | 0d |
| 248 | 1.3.2 | **Precast Installation** | 16d | 2025-03-03 | 2025-03-24 |  | 0d |
| 249 |  | L-1 Wall Erection + Alignment | 4d | 2025-03-03 | 2025-03-06 | 247 | 0d |
| 250 |  | Inspection - Structure (PLF) | 1d | 2025-03-06 | 2025-03-06 | 249FF | 97d |
| 251 |  | Beam + Slab + Staircase | 4d | 2025-03-07 | 2025-03-12 | 249 | 0d |
| 252 |  | Grouting & Welding | 2d | 2025-03-07 | 2025-03-10 | 249 | 95d |
| 253 |  | Alignment + Topping Slab Rebar fixing | 3d | 2025-03-13 | 2025-03-17 | 251 | 0d |
| 254 |  | Inspection - Structure (PLF) | 1d | 2025-03-17 | 2025-03-17 | 253FF | 0d |
| 255 |  | Topping Slab Concrete | 1d | 2025-03-18 | 2025-03-18 | 254 | 0d |
| 256 |  | L2 Wall +POD + Allignment | 4d | 2025-03-19 | 2025-03-24 | 255 | 0d |
| 257 |  | Grouting & Welding | 1d | 2025-03-24 | 2025-03-24 | 256FF | 85d |
| 258 |  | Inspection - Structure (PLF) | 1d | 2025-03-24 | 2025-03-24 | 257FF | 85d |
| 259 | 1.3.3 | **Roof** | 15d | 2025-03-21 | 2025-04-10 |  | 0d |
| 260 |  | Wood roof installation | 3d | 2025-03-21 | 2025-03-25 | 256FF+1d | 0d |
| 261 |  | Truss facia & Bracing | 3d | 2025-03-21 | 2025-03-25 | 260FF | 84d |
| 262 |  | Sheating Laying | 3d | 2025-03-26 | 2025-03-28 | 260 | 0d |
| 263 |  | Inspection - Roof & Sheathing (PLF) | 1d | 2025-03-28 | 2025-03-28 | 262FF | 0d |
| 264 |  | Base Sheet (Tin Cap) | 2d | 2025-03-31 | 2025-04-01 | 263 | 0d |
| 265 |  | Inspection For Tin cap (City) | 1d | 2025-04-01 | 2025-04-01 | 264FF | 0d |
| 266 |  | Roof Shingles | 3d | 2025-04-02 | 2025-04-04 | 265 | 62d |
| 267 |  | Inspection - Inprogress for Shingles (City) | 1d | 2025-04-04 | 2025-04-04 | 266FF | 62d |
| 268 |  | Roof Soffit | 4d | 2025-04-07 | 2025-04-10 | 267 | 62d |
| 269 |  | Inspection - Roof final ( City) | 1d | 2025-04-10 | 2025-04-10 | 268FF | 62d |
| 270 | 1.3.4 | **External Finishes** | 3d | 2025-04-11 | 2025-04-15 |  | 69d |
| 271 |  | External surface prepartion | 1d | 2025-04-11 | 2025-04-11 | 268 | 69d |
| 272 |  | Exterior primer & 1st coat paint | 1d | 2025-04-14 | 2025-04-14 | 271 | 69d |
| 273 |  | Façade tle installation | 1d | 2025-04-15 | 2025-04-15 | 272 | 69d |
| 274 | 1.3.5 | **Internal Finishes** | 72d | 2025-04-02 | 2025-07-10 |  | 0d |
| 275 | 1.3.5.1 | **Window & Sliding door fixing** | 13d | 2025-04-02 | 2025-04-18 |  | 0d |
| 276 |  | Wood buck fixing | 4d | 2025-04-02 | 2025-04-07 | 265 | 0d |
| 277 |  | Inspection for buck (City) | 1d | 2025-04-07 | 2025-04-07 | 276FF | 66d |
| 278 |  | Window & Sliding door frame fixing | 4d | 2025-04-08 | 2025-04-11 | 277 | 66d |
| 279 |  | Exterior door installation | 4d | 2025-04-08 | 2025-04-11 | 278SS | 66d |
| 280 |  | Inspection - Window, Sliding door inprogress ( City) | 1d | 2025-04-14 | 2025-04-14 | 279 | 66d |

| ID | WBS | Task | Duration | Start | Finish | Predecessors | Total float |
| --- | --- | --- | --- | --- | --- | --- | --- |
| 281 |  | Garage door Installation | 4d | 2025-04-14 | 2025-04-17 | 280SS | 66d |
| 282 |  | Inspection - Garage door inprogress (City) | 1d | 2025-04-18 | 2025-04-18 | 281 | 66d |
| 283 | 1.3.5.2 | **Drywall & MEP Rough** | 27d | 2025-04-03 | 2025-05-09 |  | 0d |
| 284 |  | Drywall framing fixing | 4d | 2025-04-03 | 2025-04-08 | 276SS+1d | 0d |
| 285 |  | Mechanical Rough | 4d | 2025-04-04 | 2025-04-09 | 284SS+1d | 0d |
| 286 |  | Plumbing Rough | 4d | 2025-04-08 | 2025-04-11 | 285SS+2d | 0d |
| 287 |  | Electrical Rough | 4d | 2025-04-10 | 2025-04-15 | 286SS+2d | 0d |
| 288 |  | Inspection-MEP Rough (City) | 1d | 2025-04-16 | 2025-04-16 | 287 | 0d |
| 289 |  | Inspection- Drywall framing & Fire penetration (City) | 1d | 2025-04-17 | 2025-04-17 | 288 | 0d |
| 290 |  | Drywall Insulation | 4d | 2025-04-18 | 2025-04-23 | 289 | 0d |
| 291 |  | Inspection - Drywall Insulation (City) | 1d | 2025-04-24 | 2025-04-24 | 290 | 0d |
| 292 |  | Drywall Board fixing | 4d | 2025-04-25 | 2025-04-30 | 291 | 0d |
| 293 |  | Inspection - Drywall screw (City) | 1d | 2025-05-01 | 2025-05-01 | 292 | 0d |
| 294 |  | Tape & Mud | 3d | 2025-05-02 | 2025-05-06 | 293 | 0d |
| 295 |  | Textue & finish | 5d | 2025-05-05 | 2025-05-09 | 294SS+1d | 0d |
| 296 | 1.3.5.3 | **Interior Paint** | 2d | 2025-05-12 | 2025-05-13 |  | 0d |
| 297 |  | Primer & 1st hand application | 2d | 2025-05-12 | 2025-05-13 | 295 | 0d |
| 298 | 1.3.5.4 | **Flooring & Baseboard** | 7d | 2025-05-14 | 2025-05-22 |  | 0d |
| 299 |  | Floor tile fixing | 7d | 2025-05-14 | 2025-05-22 | 297 | 0d |
| 300 |  | Stair tile fixiing | 7d | 2025-05-14 | 2025-05-22 | 299SS | 41d |
| 301 | 1.3.5.5 | **Interior door** | 8d | 2025-05-16 | 2025-05-27 |  | 39d |
| 302 |  | Interior door & Hardware installation | 6d | 2025-05-16 | 2025-05-23 | 312SS | 39d |
| 303 |  | Baseboard fixing | 8d | 2025-05-16 | 2025-05-27 | 302FF+2d | 39d |
| 304 | 1.3.5.6 | **Balcony waterproofing** | 4d | 2025-05-23 | 2025-05-28 |  | 36d |
| 305 |  | 1st coat of water proofing | 2d | 2025-05-23 | 2025-05-26 | 299 | 36d |
| 306 |  | 2nd coat water proofing | 1d | 2025-05-27 | 2025-05-27 | 305 | 36d |
| 307 |  | Inspection | 1d | 2025-05-28 | 2025-05-28 | 306 | 36d |
| 308 | 1.3.5.7 | **Railing** | 6d | 2025-05-23 | 2025-05-30 |  | 36d |
| 309 |  | Staircase rail fixing | 1d | 2025-05-23 | 2025-05-23 | 300 | 41d |
| 310 |  | External rail fixing | 2d | 2025-05-29 | 2025-05-30 | 307 | 36d |
| 311 | 1.3.5.8 | **Casegoods & Appliances** | 14d | 2025-05-16 | 2025-06-04 |  | 0d |
| 312 |  | Kitchen cabinet installation | 8d | 2025-05-16 | 2025-05-27 | 299SS+2d | 0d |
| 313 |  | Kitchen countertop | 3d | 2025-05-26 | 2025-05-28 | 312FF+1d | 0d |
| 314 |  | Temp test | 4d | 2025-05-29 | 2025-06-03 | 313 | 0d |
| 315 |  | Inspection | 1d | 2025-06-04 | 2025-06-04 | 314 | 0d |
| 316 |  | Bedroom closet installation | 6d | 2025-05-23 | 2025-05-30 | 299 | 36d |
| 317 |  | Kitchen & Laundry appliances installation | 3d | 2025-05-27 | 2025-05-29 | 313FF+1d | 37d |
| 318 |  | Rough cleaning | 1d | 2025-05-28 | 2025-05-28 | 313FF | 38d |
| 319 |  | Attic Insulation | 1d | 2025-05-27 | 2025-05-27 | 317SS | 39d |
| 320 |  | Blower test | 1d | 2025-05-29 | 2025-05-29 | 313 | 37d |
| 321 | 1.3.5.9 | **MEP Final & Final paint** | 44d | 2025-05-12 | 2025-07-10 |  | 7d |
| 322 |  | Mechanical final | 4d | 2025-06-20 | 2025-06-25 | 342 | 18d |
| 323 |  | Electrical final | 4d | 2025-06-20 | 2025-06-25 | 342 | 0d |
| 324 |  | Plumbing final | 4d | 2025-06-24 | 2025-06-27 | 323SS+2d | 0d |
| 325 |  | Window, Roof, Door - Final inspection | 1d | 2025-05-12 | 2025-05-12 | 295 | 50d |
| 326 |  | Final coat | 1d | 2025-06-30 | 2025-06-30 | 324 | 0d |
| 327 |  | Inspection - MEP final (city) | 1d | 2025-07-01 | 2025-07-01 | 326 | 0d |
| 328 |  | Building final | 1d | 2025-07-02 | 2025-07-02 | 327 | 7d |
| 329 |  | Rough Cleaning | 4d | 2025-07-03 | 2025-07-08 | 328 | 7d |
| 330 |  | 1st model home FQC | 1d | 2025-07-09 | 2025-07-09 | 329 | 7d |
| 331 |  | 2nd model home FQC | 1d | 2025-07-10 | 2025-07-10 | 330 | 7d |
| 332 | 1.3.6 | **External Development** | 34d | 2025-04-11 | 2025-05-28 |  | 38d |
| 333 |  | Sewer line from Unit to main line | 5d | 2025-04-11 | 2025-04-17 | 269 | 62d |
| 334 |  | FPL line | 5d | 2025-04-18 | 2025-04-24 | 333 | 62d |
| 335 |  | Side walk | 4d | 2025-05-14 | 2025-05-19 | 297 | 26d |
| 336 |  | Landscaping | 5d | 2025-05-20 | 2025-05-26 | 335 | 38d |
| 337 |  | Rain gutter fixing | 1d | 2025-05-27 | 2025-05-27 | 336 | 38d |
| 338 |  | Exterior paint final coat | 1d | 2025-05-28 | 2025-05-28 | 337 | 38d |
| 339 | 1.3.7 | **CO** | 32d | 2025-05-27 | 2025-07-09 |  | 8d |
| 340 |  | Final soil treatment | 1d | 2025-05-27 | 2025-05-27 | 336 | 38d |
| 341 |  | Final Elevation & Final survey | 1d | 2025-05-28 | 2025-05-28 | 340 | 38d |
| 342 |  | Electrical meter fixing | 1d | 2025-06-19 | 2025-06-19 | 315FS+10d | 0d |
| 343 |  | Water meter fixing | 1d | 2025-05-27 | 2025-05-27 | 335FS+5d | 26d |
| 344 |  | CO application submission | 1d | 2025-07-02 | 2025-07-02 | 327 | 0d |
| 345 |  | CO approval | 5d | 2025-07-03 | 2025-07-09 | 344 | 0d |
| 346 | 1.3.8 | **Hnad over to sales** | 22d | 2025-06-20 | 2025-07-21 |  | 0d |
| 347 |  | Punch list | 1d | 2025-07-02 | 2025-07-02 | 327 | 9d |
| 348 |  | Final cleaning | 4d | 2025-07-03 | 2025-07-08 | 347 | 9d |
| 349 |  | FQC approval | 5d | 2025-06-20 | 2025-06-26 | 343, 342 | 9d |
| 350 |  | Handing over to sales | 8d | 2025-07-10 | 2025-07-21 | 345, 349 | 0d |

## Version 2 (saved 2025-07-18, file centroSchedule2.mpp)

Last finish stays 2025-07-21. Complete tasks 7 → 8.

Removed: 2 Bldg 11 Building; 3 Foundation; 4 Building permit; 5 Building PAD Prep, Land Survey & Excavation; 6 Level preparation (Level Grouting); 7 Precast Footing + Grouting (Stem wall); 8 Back fill upto 1st lift; 9 Under Ground Connection (Backfill till level + Piping); 10 Inspection - UG plumbing (City); 11 Backfilling + Compaction + ATT; 12 Vapour Barrier + Add rebar fixing; 13 Inspection - Rebar (PLF); 14 Slab on Grade concreting; 15 Precast Installation; 16 L-1 Wall Erection + Alignment; 17 Inspection - Structure (PLF); 18 Beam + Slab + Staircase; 19 Grouting & Welding; 20 Alignment + Topping Slab Rebar fixing; 21 Inspection - Structure (PLF); 22 Topping Slab Concrete; 23 L2 Wall +POD + Allignment; 24 Grouting & Welding; 25 Inspection - Structure (PLF); 26 Roof; 27 Wood roof installation; 28 Truss facia & Bracing; 29 Sheating Laying; 30 Inspection - Roof & Sheathing (PLF); 31 Base Sheet (Tin Cap); 32 Inspection For Tin cap (City); 33 Roof Shingles; 34 Inspection - Inprogress for Shingles (City); 35 Roof Soffit; 36 Inspection - Roof final ( City); 37 External Finishes; 38 External surface prepartion; 39 Exterior primer & 1st coat paint; 40 Façade tle installation; 41 Internal Finishes; 42 Window & Sliding door fixing; 43 Wood buck fixing; 44 Inspection for buck (City); 45 Window & Sliding door frame fixing; 46 Exterior door installation; 47 Inspection - Window, Sliding door inprogress ( City); 48 Garage door Installation; 49 Inspection - Garage door inprogress (City); 50 Drywall & MEP Rough; 51 Drywall framing fixing; 52 Mechanical Rough; 53 Plumbing Rough; 54 Electrical Rough; 55 Inspection-MEP Rough (City); 56 Inspection- Drywall framing & Fire penetration (City); 57 Drywall Insulation; 58 Inspection - Drywall Insulation (City); 59 Drywall Board fixing; 60 Inspection - Drywall screw (City); 61 Tape & Mud; 62 Textue & finish; 63 Interior Paint; 64 Primer & 1st hand application; 65 Flooring & Baseboard; 66 Floor tile fixing; 67 Stair tile fixiing; 68 Interior door; 69 Interior door & Hardware installation; 70 Baseboard fixing; 71 Balcony waterproofing; 72 1st coat of water proofing; 73 2nd coat water proofing; 74 Inspection; 75 Railing; 76 Staircase rail fixing; 77 External rail fixing; 78 Casegoods & Appliances; 79 Kitchen cabinet installation; 80 Kitchen countertop; 81 Temp test; 82 Inspection; 83 Bedroom closet installation; 84 Kitchen & Laundry appliances installation; 85 Rough cleaning; 86 Attic Insulation; 87 Blower test; 88 MEP Final & Final paint; 89 Mechanical final; 90 Electrical final; 91 Plumbing final; 92 Window, Roof, Door - Final inspection; 93 Final coat; 94 Inspection - MEP final (city); 95 Building final; 96 Rough Cleaning; 97 1st model home FQC; 98 2nd model home FQC; 99 1st Model home completion HO to sales; 100 External Development; 101 Sewer line from Unit to main line; 102 FPL line; 103 Side walk; 104 Landscaping; 105 Rain gutter fixing; 106 Exterior paint final coat; 107 CO; 108 Final soil treatment; 109 Final Elevation & Final survey; 110 Electrical meter fixing; 111 Water meter fixing; 112 CO application submission; 113 CO approval; 114 Hnad over to sales; 115 Punch list; 116 Final cleaning; 117 FQC approval; 118 Handing over to sales

Changed:

| ID | Task | Start | Finish | Duration | Complete | Total float | Other |
| --- | --- | --- | --- | --- | --- | --- | --- |
| 1 | **addSchedule01** |  |  |  | 9% → 16% |  | baseline start none → 2025-01-23; baseline finish none → 2025-07-21 |
| 2 | **Bldg 9 Building** |  |  |  | 22% → 28% |  | baseline start none → 2025-01-23; baseline finish none → 2025-07-18 |
| 3 | **Foundation** |  |  |  |  | 1.75d → 89d | baseline start 2023-09-23 → 2025-01-23; baseline finish 2023-10-05 → 2025-02-28 |
| 4 | Building permit |  |  |  |  | 0d → 80d | baseline start none → 2025-02-10; baseline finish none → 2025-02-10 |
| 5 | Building PAD Prep, Land Survey & Excavation |  |  |  |  | 1.75d → 89d | baseline start 2023-09-23 → 2025-01-23; baseline finish 2023-09-23 → 2025-01-27 |
| 6 | Level preparation (Level Grouting) |  |  |  |  | 1.75d → 89d | baseline start none → 2025-01-28; baseline finish none → 2025-01-29 |
| 7 | Precast Footing + Grouting (Stem wall) |  |  |  |  | 1.75d → 89d | baseline start 2023-09-24 → 2025-01-30; baseline finish 2023-09-27 → 2025-02-06 |
| 8 | Back fill upto 1st lift |  |  |  |  | 1.75d → 89d | baseline start none → 2025-02-07; baseline finish none → 2025-02-10 |
| 9 | Under Ground Connection (Backfill till level + Piping) |  |  |  |  | 1.75d → 89d | baseline start 2023-09-28 → 2025-02-11; baseline finish 2023-09-28 → 2025-02-14 |
| 10 | Inspection - UG plumbing (City) |  |  |  |  | 1.75d → 89d | baseline start 2023-09-28 → 2025-02-14; baseline finish 2023-09-28 → 2025-02-14 |
| 11 | Backfilling + Compaction + ATT |  |  |  |  | 1.75d → 89d | baseline start 2023-09-29 → 2025-02-17; baseline finish 2023-09-29 → 2025-02-19 |
| 12 | Vapour Barrier + Add rebar fixing |  |  |  |  | 1.75d → 89d | baseline start 2023-09-30 → 2025-02-20; baseline finish 2023-09-30 → 2025-02-26 |
| 13 | Inspection - Rebar (PLF) |  |  |  |  | 1.75d → 89d | baseline start 2023-09-30 → 2025-02-27; baseline finish 2023-09-30 → 2025-02-27 |
| 14 | Slab on Grade concreting |  |  |  |  | 1.75d → 89d | baseline start 2023-09-30 → 2025-02-28; baseline finish 2023-09-30 → 2025-02-28 |
| 15 | **Precast Installation** | 2025-03-01 A → 2025-03-03 A (+2d) | 2025-05-16 → 2025-04-16 (-30d) | 55d → 33d | 21% → 67% | 46d → 68d | baseline start none → 2025-03-03; baseline finish none → 2025-04-16 |
| 16 | L-1 Wall Erection + Alignment |  |  |  |  | 1.75d → 89d | baseline start 2023-10-01 → 2025-03-03; baseline finish 2023-10-01 → 2025-03-06 |
| 17 | Inspection - Structure (PLF) |  |  |  |  |  | baseline start 2023-10-02 → 2025-03-06; baseline finish 2023-10-02 → 2025-03-06 |
| 18 | Beam + Slab + Staircase |  |  |  |  | 1.75d → 89d | baseline start 2023-10-02 → 2025-03-07; baseline finish 2023-10-02 → 2025-03-12 |
| 19 | Grouting & Welding |  |  |  |  |  | baseline start none → 2025-03-07; baseline finish none → 2025-03-10 |
| 20 | Alignment + Topping Slab Rebar fixing |  |  |  |  | 1.75d → 89d | baseline start 2023-10-03 → 2025-03-13; baseline finish 2023-10-03 → 2025-03-17 |
| 21 | Inspection - Structure (PLF) |  |  |  |  | 1.75d → 89d | baseline start 2023-10-03 → 2025-03-17; baseline finish 2023-10-03 → 2025-03-17 |
| 22 | Topping Slab Concrete |  |  |  |  | 1.75d → 89d | baseline start 2023-10-03 → 2025-03-18; baseline finish 2023-10-03 → 2025-03-18 |
| 23 | L2 Wall +POD + Allignment | 2025-03-01 A → 2025-03-04 A (+3d) | 2025-05-16 → 2025-04-16 A (-30d) | 55d → 32d | 25% → 100% | 45d → none | baseline start 2023-10-04 → 2025-03-04; baseline finish 2023-10-05 → 2025-04-16 |
| 24 | Grouting & Welding |  |  |  |  |  | baseline start none → 2025-03-07; baseline finish none → 2025-03-10 |
| 25 | Inspection - Structure (PLF) | 2025-03-10 → 2025-03-20 A (+10d) | 2025-03-10 → 2025-03-20 (+10d) |  | 0% → 20% | 95d → 87d | baseline start 2023-10-05 → 2025-03-20; baseline finish 2023-10-05 → 2025-03-20 |
| 26 | **Roof** |  |  |  |  |  | baseline start 2023-10-06 → 2025-03-19; baseline finish 2023-10-12 → 2025-05-19 |
| 27 | Wood roof installation |  |  |  |  |  | baseline start 2023-10-06 → 2025-03-19; baseline finish 2023-10-06 → 2025-05-19 |
| 28 | Truss facia & Bracing |  |  |  |  |  | baseline start 2023-10-06 → 2025-03-24; baseline finish 2023-10-06 → 2025-05-19 |
| 29 | Sheating Laying |  |  |  |  |  | baseline start 2023-10-07 → 2025-03-26; baseline finish 2023-10-07 → 2025-03-28 |
| 30 | Inspection - Roof & Sheathing (PLF) |  |  |  |  |  | baseline start 2023-10-07 → 2025-04-02; baseline finish 2023-10-07 → 2025-04-04 |
| 31 | Base Sheet (Tin Cap) |  |  |  |  |  | baseline start 2023-10-08 → 2025-04-07; baseline finish 2023-10-08 → 2025-04-08 |
| 32 | Inspection For Tin cap (City) |  |  |  |  | -1.71d → 0d | baseline start 2023-10-09 → 2025-04-09; baseline finish 2023-10-09 → 2025-04-09 |
| 33 | Roof Shingles |  |  |  |  |  | baseline start 2023-10-10 → 2025-04-10; baseline finish 2023-10-10 → 2025-04-14 |
| 34 | Inspection - Inprogress for Shingles (City) |  |  |  |  |  | baseline start 2023-10-11 → 2025-04-14; baseline finish 2023-10-11 → 2025-04-14 |
| 35 | Roof Soffit |  |  |  |  |  | baseline start 2023-10-12 → 2025-04-15; baseline finish 2023-10-12 → 2025-04-18 |
| 36 | Inspection - Roof final ( City) |  |  |  |  |  | baseline start 2023-10-12 → 2025-04-18; baseline finish 2023-10-12 → 2025-04-18 |
| 37 | **External Finishes** |  |  |  |  |  | baseline start 2023-10-13 → 2025-04-21; baseline finish 2023-10-15 → 2025-05-02 |
| 38 | External surface prepartion |  |  |  |  |  | baseline start 2023-10-13 → 2025-04-21; baseline finish 2023-10-13 → 2025-04-21 |
| 39 | Exterior primer & 1st coat paint |  |  |  |  |  | baseline start 2023-10-14 → 2025-04-28; baseline finish 2023-10-14 → 2025-04-28 |
| 40 | Façade tle installation |  |  |  |  |  | baseline start 2023-10-15 → 2025-04-29; baseline finish 2023-10-15 → 2025-05-02 |
| 41 | **Internal Finishes** |  |  |  |  |  | baseline start 2023-10-09 → 2025-04-10; baseline finish 2023-10-22 → 2025-07-18 |
| 42 | **Window & Sliding door fixing** |  |  |  |  |  | baseline start 2023-10-09 → 2025-04-10; baseline finish 2023-10-12 → 2025-04-28 |
| 43 | Wood buck fixing |  |  |  |  |  | baseline start 2023-10-09 → 2025-04-10; baseline finish 2023-10-09 → 2025-04-15 |
| 44 | Inspection for buck (City) |  |  |  |  |  | baseline start 2023-10-09 → 2025-04-15; baseline finish 2023-10-09 → 2025-04-15 |
| 45 | Window & Sliding door frame fixing |  |  |  |  |  | baseline start 2023-10-10 → 2025-04-16; baseline finish 2023-10-10 → 2025-04-21 |
| 46 | Exterior door installation |  |  |  |  |  | baseline start 2023-10-10 → 2025-04-16; baseline finish 2023-10-10 → 2025-04-21 |
| 47 | Inspection - Window, Sliding door inprogress ( City) |  |  |  |  |  | baseline start 2023-10-11 → 2025-04-22; baseline finish 2023-10-11 → 2025-04-22 |
| 48 | Garage door Installation |  |  |  |  |  | baseline start 2023-10-11 → 2025-04-22; baseline finish 2023-10-11 → 2025-04-25 |
| 49 | Inspection - Garage door inprogress (City) |  |  |  |  |  | baseline start 2023-10-12 → 2025-04-28; baseline finish 2023-10-12 → 2025-04-28 |
| 50 | **Drywall & MEP Rough** |  |  |  |  |  | baseline start 2023-10-09 → 2025-04-11; baseline finish 2023-10-16 → 2025-05-19 |
| 51 | Drywall framing fixing |  |  |  |  |  | baseline start 2023-10-09 → 2025-04-11; baseline finish 2023-10-09 → 2025-04-16 |
| 52 | Mechanical Rough |  |  |  |  |  | baseline start 2023-10-09 → 2025-04-14; baseline finish 2023-10-11 → 2025-04-17 |
| 53 | Plumbing Rough |  |  |  |  |  | baseline start 2023-10-10 → 2025-04-16; baseline finish 2023-10-10 → 2025-04-21 |
| 54 | Electrical Rough |  |  |  |  |  | baseline start 2023-10-10 → 2025-04-18; baseline finish 2023-10-10 → 2025-04-23 |
| 55 | Inspection-MEP Rough (City) |  |  |  |  |  | baseline start 2023-10-11 → 2025-04-24; baseline finish 2023-10-11 → 2025-04-24 |
| 56 | Inspection- Drywall framing & Fire penetration (City) |  |  |  |  |  | baseline start 2023-10-11 → 2025-04-25; baseline finish 2023-10-11 → 2025-04-25 |
| 57 | Drywall Insulation |  |  |  |  |  | baseline start 2023-10-12 → 2025-04-28; baseline finish 2023-10-12 → 2025-05-01 |
| 58 | Inspection - Drywall Insulation (City) |  |  |  |  |  | baseline start 2023-10-12 → 2025-05-02; baseline finish 2023-10-12 → 2025-05-02 |
| 59 | Drywall Board fixing |  |  |  |  |  | baseline start 2023-10-12 → 2025-05-05; baseline finish 2023-10-13 → 2025-05-08 |
| 60 | Inspection - Drywall screw (City) |  |  |  |  |  | baseline start 2023-10-14 → 2025-05-09; baseline finish 2023-10-14 → 2025-05-09 |
| 61 | Tape & Mud |  |  |  |  |  | baseline start 2023-10-15 → 2025-05-12; baseline finish 2023-10-15 → 2025-05-14 |
| 62 | Textue & finish |  |  |  |  |  | baseline start 2023-10-16 → 2025-05-13; baseline finish 2023-10-16 → 2025-05-19 |
| 63 | **Interior Paint** |  |  |  |  |  | baseline start 2023-10-19 → 2025-05-20; baseline finish 2023-10-19 → 2025-05-21 |
| 64 | Primer & 1st hand application |  |  |  |  |  | baseline start 2023-10-19 → 2025-05-20; baseline finish 2023-10-19 → 2025-05-21 |
| 65 | **Flooring & Baseboard** |  |  |  |  |  | baseline start 2023-10-17 → 2025-05-14; baseline finish 2023-10-17 → 2025-05-30 |
| 66 | Floor tile fixing |  |  |  |  |  | baseline start 2023-10-17 → 2025-05-22; baseline finish 2023-10-17 → 2025-05-30 |
| 67 | Stair tile fixiing |  |  |  |  |  | baseline start 2023-10-17 → 2025-05-14; baseline finish 2023-10-17 → 2025-05-30 |
| 68 | **Interior door** |  |  |  |  |  | baseline start 2023-10-18 → 2025-05-22; baseline finish 2023-10-18 → 2025-05-30 |
| 69 | Interior door & Hardware installation |  |  |  |  |  | baseline start 2023-10-18 → 2025-05-26; baseline finish 2023-10-18 → 2025-05-29 |
| 70 | Baseboard fixing |  |  |  |  |  | baseline start 2023-10-18 → 2025-05-22; baseline finish 2023-10-18 → 2025-05-30 |

| ID | Task | Other |
| --- | --- | --- |
| 71 | **Balcony waterproofing** | baseline start 2023-10-11 → 2025-06-02; baseline finish 2023-10-12 → 2025-06-05 |
| 72 | 1st coat of water proofing | baseline start 2023-10-11 → 2025-06-02; baseline finish 2023-10-11 → 2025-06-03 |
| 73 | 2nd coat water proofing | baseline start 2023-10-12 → 2025-06-04; baseline finish 2023-10-12 → 2025-06-04 |
| 74 | Inspection | baseline start none → 2025-06-05; baseline finish none → 2025-06-05 |
| 75 | **Railing** | baseline start 2023-10-13 → 2025-06-02; baseline finish 2023-10-18 → 2025-06-09 |
| 76 | Staircase rail fixing | baseline start 2023-10-18 → 2025-06-02; baseline finish 2023-10-18 → 2025-06-02 |
| 77 | External rail fixing | baseline start 2023-10-13 → 2025-06-06; baseline finish 2023-10-13 → 2025-06-09 |
| 78 | **Casegoods & Appliances** | baseline start 2023-10-20 → 2025-05-26; baseline finish 2023-10-22 → 2025-06-12 |
| 79 | Kitchen cabinet installation | baseline start 2023-10-20 → 2025-05-26; baseline finish 2023-10-20 → 2025-06-04 |
| 80 | Kitchen countertop | baseline start 2023-10-20 → 2025-06-03; baseline finish 2023-10-20 → 2025-06-05 |
| 81 | Temp test | baseline start none → 2025-06-06; baseline finish none → 2025-06-11 |
| 82 | Inspection | baseline start none → 2025-06-12; baseline finish none → 2025-06-12 |
| 83 | Bedroom closet installation | baseline start 2023-10-21 → 2025-06-02; baseline finish 2023-10-21 → 2025-06-09 |
| 84 | Kitchen & Laundry appliances installation | baseline start 2023-10-21 → 2025-06-04; baseline finish 2023-10-21 → 2025-06-06 |
| 85 | Rough cleaning | baseline start 2023-10-20 → 2025-06-05; baseline finish 2023-10-20 → 2025-06-05 |
| 86 | Attic Insulation | baseline start 2023-10-21 → 2025-06-04; baseline finish 2023-10-21 → 2025-06-04 |
| 87 | Blower test | baseline start 2023-10-21 → 2025-06-06; baseline finish 2023-10-21 → 2025-06-06 |
| 88 | **MEP Final & Final paint** | baseline start 2023-10-20 → 2025-05-20; baseline finish 2023-10-22 → 2025-07-18 |
| 89 | Mechanical final | baseline start 2023-10-20 → 2025-06-30; baseline finish 2023-10-20 → 2025-07-03 |
| 90 | Electrical final | baseline start 2023-10-20 → 2025-06-30; baseline finish 2023-10-20 → 2025-07-03 |
| 91 | Plumbing final | baseline start 2023-10-21 → 2025-07-02; baseline finish 2023-10-21 → 2025-07-07 |
| 92 | Window, Roof, Door - Final inspection | baseline start none → 2025-05-20; baseline finish none → 2025-05-20 |
| 93 | Final coat | baseline start 2023-10-22 → 2025-07-08; baseline finish 2023-10-22 → 2025-07-08 |
| 94 | Inspection - MEP final (city) | baseline start 2023-10-22 → 2025-07-09; baseline finish 2023-10-22 → 2025-07-09 |
| 95 | Building final | baseline start none → 2025-07-10; baseline finish none → 2025-07-10 |
| 96 | Rough Cleaning | baseline start none → 2025-07-11; baseline finish none → 2025-07-16 |
| 97 | 1st model home FQC | baseline start none → 2025-07-17; baseline finish none → 2025-07-17 |
| 98 | 2nd model home FQC | baseline start none → 2025-07-18; baseline finish none → 2025-07-18 |
| 99 | **External Development** | baseline start none → 2025-04-21; baseline finish none → 2025-06-05 |
| 100 | Sewer line from Unit to main line | baseline start none → 2025-04-21; baseline finish none → 2025-04-25 |
| 101 | FPL line | baseline start none → 2025-04-28; baseline finish none → 2025-05-02 |
| 102 | Side walk | baseline start none → 2025-05-22; baseline finish none → 2025-05-27 |
| 103 | Landscaping | baseline start none → 2025-05-28; baseline finish none → 2025-06-03 |
| 104 | Rain gutter fixing | baseline start none → 2025-06-04; baseline finish none → 2025-06-04 |
| 105 | Exterior paint final coat | baseline start none → 2025-06-05; baseline finish none → 2025-06-05 |
| 106 | **CO** | baseline start none → 2025-06-04; baseline finish none → 2025-07-17 |
| 107 | Final soil treatment | baseline start none → 2025-06-04; baseline finish none → 2025-06-04 |
| 108 | Final Elevation & Final survey | baseline start none → 2025-06-05; baseline finish none → 2025-06-05 |
| 109 | Electrical meter fixing | baseline start none → 2025-06-27; baseline finish none → 2025-06-27 |
| 110 | Water meter fixing | baseline start none → 2025-06-04; baseline finish none → 2025-06-04 |
| 111 | CO application submission | baseline start none → 2025-07-10; baseline finish none → 2025-07-10 |
| 112 | CO approval | baseline start none → 2025-07-11; baseline finish none → 2025-07-17 |
| 113 | **Hnad over to sales** | baseline start none → 2025-06-30; baseline finish none → 2025-07-18 |
| 114 | Punch list | baseline start none → 2025-07-10; baseline finish none → 2025-07-10 |
| 115 | Final cleaning | baseline start none → 2025-07-11; baseline finish none → 2025-07-16 |
| 116 | FQC approval | baseline start none → 2025-06-30; baseline finish none → 2025-07-04 |
| 117 | Handing over to sales | baseline start none → 2025-07-18; baseline finish none → 2025-07-18 |
| 118 | **Bldg 14 Building** | baseline start none → 2025-01-23; baseline finish none → 2025-07-21 |
| 119 | **Foundation** | baseline start 2023-09-23 → 2025-01-23; baseline finish 2023-10-05 → 2025-02-28 |
| 120 | Building permit | baseline start none → 2025-02-10; baseline finish none → 2025-02-10 |
| 121 | Building PAD Prep, Land Survey & Excavation | baseline start 2023-09-23 → 2025-01-23; baseline finish 2023-09-23 → 2025-01-27 |
| 122 | Level preparation (Level Grouting) | baseline start none → 2025-01-28; baseline finish none → 2025-01-29 |
| 123 | Precast Footing + Grouting (Stem wall) | baseline start 2023-09-24 → 2025-01-30; baseline finish 2023-09-27 → 2025-02-06 |
| 124 | Back fill upto 1st lift | baseline start none → 2025-02-07; baseline finish none → 2025-02-10 |
| 125 | Under Ground Connection (Backfill till level + Piping) | baseline start 2023-09-28 → 2025-02-11; baseline finish 2023-09-28 → 2025-02-14 |
| 126 | Inspection - UG plumbing (City) | baseline start 2023-09-28 → 2025-02-14; baseline finish 2023-09-28 → 2025-02-14 |
| 127 | Backfilling + Compaction + ATT | baseline start 2023-09-29 → 2025-02-17; baseline finish 2023-09-29 → 2025-02-19 |
| 128 | Vapour Barrier + Add rebar fixing | baseline start 2023-09-30 → 2025-02-20; baseline finish 2023-09-30 → 2025-02-26 |
| 129 | Inspection - Rebar (PLF) | baseline start 2023-09-30 → 2025-02-27; baseline finish 2023-09-30 → 2025-02-27 |
| 130 | Slab on Grade concreting | baseline start 2023-09-30 → 2025-02-28; baseline finish 2023-09-30 → 2025-02-28 |
| 131 | **Precast Installation** | baseline start none → 2025-03-03; baseline finish none → 2025-03-24 |
| 132 | L-1 Wall Erection + Alignment | baseline start 2023-10-01 → 2025-03-03; baseline finish 2023-10-01 → 2025-03-06 |
| 133 | Inspection - Structure (PLF) | baseline start 2023-10-02 → 2025-03-06; baseline finish 2023-10-02 → 2025-03-06 |
| 134 | Beam + Slab + Staircase | baseline start 2023-10-02 → 2025-03-07; baseline finish 2023-10-02 → 2025-03-12 |
| 135 | Grouting & Welding | baseline start none → 2025-03-07; baseline finish none → 2025-03-10 |
| 136 | Alignment + Topping Slab Rebar fixing | baseline start 2023-10-03 → 2025-03-13; baseline finish 2023-10-03 → 2025-03-17 |
| 137 | Inspection - Structure (PLF) | baseline start 2023-10-03 → 2025-03-17; baseline finish 2023-10-03 → 2025-03-17 |
| 138 | Topping Slab Concrete | baseline start 2023-10-03 → 2025-03-18; baseline finish 2023-10-03 → 2025-03-18 |
| 139 | L2 Wall +POD + Allignment | baseline start 2023-10-04 → 2025-03-19; baseline finish 2023-10-05 → 2025-03-24 |
| 140 | Grouting & Welding | baseline start none → 2025-03-24; baseline finish none → 2025-03-24 |

| ID | Task | Other |
| --- | --- | --- |
| 141 | Inspection - Structure (PLF) | baseline start 2023-10-05 → 2025-03-24; baseline finish 2023-10-05 → 2025-03-24 |
| 142 | **Roof** | baseline start 2023-10-06 → 2025-03-21; baseline finish 2023-10-12 → 2025-04-10 |
| 143 | Wood roof installation | baseline start 2023-10-06 → 2025-03-21; baseline finish 2023-10-06 → 2025-03-25 |
| 144 | Truss facia & Bracing | baseline start 2023-10-06 → 2025-03-21; baseline finish 2023-10-06 → 2025-03-25 |
| 145 | Sheating Laying | baseline start 2023-10-07 → 2025-03-26; baseline finish 2023-10-07 → 2025-03-28 |
| 146 | Inspection - Roof & Sheathing (PLF) | baseline start 2023-10-07 → 2025-03-28; baseline finish 2023-10-07 → 2025-03-28 |
| 147 | Base Sheet (Tin Cap) | baseline start 2023-10-08 → 2025-03-31; baseline finish 2023-10-08 → 2025-04-01 |
| 148 | Inspection For Tin cap (City) | baseline start 2023-10-09 → 2025-04-01; baseline finish 2023-10-09 → 2025-04-01 |
| 149 | Roof Shingles | baseline start 2023-10-10 → 2025-04-02; baseline finish 2023-10-10 → 2025-04-04 |
| 150 | Inspection - Inprogress for Shingles (City) | baseline start 2023-10-11 → 2025-04-04; baseline finish 2023-10-11 → 2025-04-04 |
| 151 | Roof Soffit | baseline start 2023-10-12 → 2025-04-07; baseline finish 2023-10-12 → 2025-04-10 |
| 152 | Inspection - Roof final ( City) | baseline start 2023-10-12 → 2025-04-10; baseline finish 2023-10-12 → 2025-04-10 |
| 153 | **External Finishes** | baseline start 2023-10-13 → 2025-04-11; baseline finish 2023-10-15 → 2025-04-15 |
| 154 | External surface prepartion | baseline start 2023-10-13 → 2025-04-11; baseline finish 2023-10-13 → 2025-04-11 |
| 155 | Exterior primer & 1st coat paint | baseline start 2023-10-14 → 2025-04-14; baseline finish 2023-10-14 → 2025-04-14 |
| 156 | Façade tle installation | baseline start 2023-10-15 → 2025-04-15; baseline finish 2023-10-15 → 2025-04-15 |
| 157 | **Internal Finishes** | baseline start 2023-10-09 → 2025-04-02; baseline finish 2023-10-22 → 2025-07-10 |
| 158 | **Window & Sliding door fixing** | baseline start 2023-10-09 → 2025-04-02; baseline finish 2023-10-12 → 2025-04-18 |
| 159 | Wood buck fixing | baseline start 2023-10-09 → 2025-04-02; baseline finish 2023-10-09 → 2025-04-07 |
| 160 | Inspection for buck (City) | baseline start 2023-10-09 → 2025-04-07; baseline finish 2023-10-09 → 2025-04-07 |
| 161 | Window & Sliding door frame fixing | baseline start 2023-10-10 → 2025-04-08; baseline finish 2023-10-10 → 2025-04-11 |
| 162 | Exterior door installation | baseline start 2023-10-10 → 2025-04-08; baseline finish 2023-10-10 → 2025-04-11 |
| 163 | Inspection - Window, Sliding door inprogress ( City) | baseline start 2023-10-11 → 2025-04-14; baseline finish 2023-10-11 → 2025-04-14 |
| 164 | Garage door Installation | baseline start 2023-10-11 → 2025-04-14; baseline finish 2023-10-11 → 2025-04-17 |
| 165 | Inspection - Garage door inprogress (City) | baseline start 2023-10-12 → 2025-04-18; baseline finish 2023-10-12 → 2025-04-18 |
| 166 | **Drywall & MEP Rough** | baseline start 2023-10-09 → 2025-04-03; baseline finish 2023-10-16 → 2025-05-09 |
| 167 | Drywall framing fixing | baseline start 2023-10-09 → 2025-04-03; baseline finish 2023-10-09 → 2025-04-08 |
| 168 | Mechanical Rough | baseline start 2023-10-09 → 2025-04-04; baseline finish 2023-10-11 → 2025-04-09 |
| 169 | Plumbing Rough | baseline start 2023-10-10 → 2025-04-08; baseline finish 2023-10-10 → 2025-04-11 |
| 170 | Electrical Rough | baseline start 2023-10-10 → 2025-04-10; baseline finish 2023-10-10 → 2025-04-15 |
| 171 | Inspection-MEP Rough (City) | baseline start 2023-10-11 → 2025-04-16; baseline finish 2023-10-11 → 2025-04-16 |
| 172 | Inspection- Drywall framing & Fire penetration (City) | baseline start 2023-10-11 → 2025-04-17; baseline finish 2023-10-11 → 2025-04-17 |
| 173 | Drywall Insulation | baseline start 2023-10-12 → 2025-04-18; baseline finish 2023-10-12 → 2025-04-23 |
| 174 | Inspection - Drywall Insulation (City) | baseline start 2023-10-12 → 2025-04-24; baseline finish 2023-10-12 → 2025-04-24 |
| 175 | Drywall Board fixing | baseline start 2023-10-12 → 2025-04-25; baseline finish 2023-10-13 → 2025-04-30 |
| 176 | Inspection - Drywall screw (City) | baseline start 2023-10-14 → 2025-05-01; baseline finish 2023-10-14 → 2025-05-01 |
| 177 | Tape & Mud | baseline start 2023-10-15 → 2025-05-02; baseline finish 2023-10-15 → 2025-05-06 |
| 178 | Textue & finish | baseline start 2023-10-16 → 2025-05-05; baseline finish 2023-10-16 → 2025-05-09 |
| 179 | **Interior Paint** | baseline start 2023-10-19 → 2025-05-12; baseline finish 2023-10-19 → 2025-05-13 |
| 180 | Primer & 1st hand application | baseline start 2023-10-19 → 2025-05-12; baseline finish 2023-10-19 → 2025-05-13 |
| 181 | **Flooring & Baseboard** | baseline start 2023-10-17 → 2025-05-14; baseline finish 2023-10-17 → 2025-05-22 |
| 182 | Floor tile fixing | baseline start 2023-10-17 → 2025-05-14; baseline finish 2023-10-17 → 2025-05-22 |
| 183 | Stair tile fixiing | baseline start 2023-10-17 → 2025-05-14; baseline finish 2023-10-17 → 2025-05-22 |
| 184 | **Interior door** | baseline start 2023-10-18 → 2025-05-16; baseline finish 2023-10-18 → 2025-05-27 |
| 185 | Interior door & Hardware installation | baseline start 2023-10-18 → 2025-05-16; baseline finish 2023-10-18 → 2025-05-23 |
| 186 | Baseboard fixing | baseline start 2023-10-18 → 2025-05-16; baseline finish 2023-10-18 → 2025-05-27 |
| 187 | **Balcony waterproofing** | baseline start 2023-10-11 → 2025-05-23; baseline finish 2023-10-12 → 2025-05-28 |
| 188 | 1st coat of water proofing | baseline start 2023-10-11 → 2025-05-23; baseline finish 2023-10-11 → 2025-05-26 |
| 189 | 2nd coat water proofing | baseline start 2023-10-12 → 2025-05-27; baseline finish 2023-10-12 → 2025-05-27 |
| 190 | Inspection | baseline start none → 2025-05-28; baseline finish none → 2025-05-28 |
| 191 | **Railing** | baseline start 2023-10-13 → 2025-05-23; baseline finish 2023-10-18 → 2025-05-30 |
| 192 | Staircase rail fixing | baseline start 2023-10-18 → 2025-05-23; baseline finish 2023-10-18 → 2025-05-23 |
| 193 | External rail fixing | baseline start 2023-10-13 → 2025-05-29; baseline finish 2023-10-13 → 2025-05-30 |
| 194 | **Casegoods & Appliances** | baseline start 2023-10-20 → 2025-05-16; baseline finish 2023-10-22 → 2025-06-04 |
| 195 | Kitchen cabinet installation | baseline start 2023-10-20 → 2025-05-16; baseline finish 2023-10-20 → 2025-05-27 |
| 196 | Kitchen countertop | baseline start 2023-10-20 → 2025-05-26; baseline finish 2023-10-20 → 2025-05-28 |
| 197 | Temp test | baseline start none → 2025-05-29; baseline finish none → 2025-06-03 |
| 198 | Inspection | baseline start none → 2025-06-04; baseline finish none → 2025-06-04 |
| 199 | Bedroom closet installation | baseline start 2023-10-21 → 2025-05-23; baseline finish 2023-10-21 → 2025-05-30 |
| 200 | Kitchen & Laundry appliances installation | baseline start 2023-10-21 → 2025-05-27; baseline finish 2023-10-21 → 2025-05-29 |
| 201 | Rough cleaning | baseline start 2023-10-20 → 2025-05-28; baseline finish 2023-10-20 → 2025-05-28 |
| 202 | Attic Insulation | baseline start 2023-10-21 → 2025-05-27; baseline finish 2023-10-21 → 2025-05-27 |
| 203 | Blower test | baseline start 2023-10-21 → 2025-05-29; baseline finish 2023-10-21 → 2025-05-29 |
| 204 | **MEP Final & Final paint** | baseline start 2023-10-20 → 2025-05-12; baseline finish 2023-10-22 → 2025-07-10 |
| 205 | Mechanical final | baseline start 2023-10-20 → 2025-06-20; baseline finish 2023-10-20 → 2025-06-25 |
| 206 | Electrical final | baseline start 2023-10-20 → 2025-06-20; baseline finish 2023-10-20 → 2025-06-25 |
| 207 | Plumbing final | baseline start 2023-10-21 → 2025-06-24; baseline finish 2023-10-21 → 2025-06-27 |
| 208 | Window, Roof, Door - Final inspection | baseline start none → 2025-05-12; baseline finish none → 2025-05-12 |
| 209 | Final coat | baseline start 2023-10-22 → 2025-06-30; baseline finish 2023-10-22 → 2025-06-30 |
| 210 | Inspection - MEP final (city) | baseline start 2023-10-22 → 2025-07-01; baseline finish 2023-10-22 → 2025-07-01 |

| ID | Task | Other |
| --- | --- | --- |
| 211 | Building final | baseline start none → 2025-07-02; baseline finish none → 2025-07-02 |
| 212 | Rough Cleaning | baseline start none → 2025-07-03; baseline finish none → 2025-07-08 |
| 213 | 1st model home FQC | baseline start none → 2025-07-09; baseline finish none → 2025-07-09 |
| 214 | 2nd model home FQC | baseline start none → 2025-07-10; baseline finish none → 2025-07-10 |
| 215 | **External Development** | baseline start none → 2025-04-11; baseline finish none → 2025-05-28 |
| 216 | Sewer line from Unit to main line | baseline start none → 2025-04-11; baseline finish none → 2025-04-17 |
| 217 | FPL line | baseline start none → 2025-04-18; baseline finish none → 2025-04-24 |
| 218 | Side walk | baseline start none → 2025-05-14; baseline finish none → 2025-05-19 |
| 219 | Landscaping | baseline start none → 2025-05-20; baseline finish none → 2025-05-26 |
| 220 | Rain gutter fixing | baseline start none → 2025-05-27; baseline finish none → 2025-05-27 |
| 221 | Exterior paint final coat | baseline start none → 2025-05-28; baseline finish none → 2025-05-28 |
| 222 | **CO** | baseline start none → 2025-05-27; baseline finish none → 2025-07-09 |
| 223 | Final soil treatment | baseline start none → 2025-05-27; baseline finish none → 2025-05-27 |
| 224 | Final Elevation & Final survey | baseline start none → 2025-05-28; baseline finish none → 2025-05-28 |
| 225 | Electrical meter fixing | baseline start none → 2025-06-19; baseline finish none → 2025-06-19 |
| 226 | Water meter fixing | baseline start none → 2025-05-27; baseline finish none → 2025-05-27 |
| 227 | CO application submission | baseline start none → 2025-07-02; baseline finish none → 2025-07-02 |
| 228 | CO approval | baseline start none → 2025-07-03; baseline finish none → 2025-07-09 |
| 229 | **Hnad over to sales** | baseline start none → 2025-06-20; baseline finish none → 2025-07-21 |
| 230 | Punch list | baseline start none → 2025-07-02; baseline finish none → 2025-07-02 |
| 231 | Final cleaning | baseline start none → 2025-07-03; baseline finish none → 2025-07-08 |
| 232 | FQC approval | baseline start none → 2025-06-20; baseline finish none → 2025-06-26 |
| 233 | Handing over to sales | baseline start none → 2025-07-10; baseline finish none → 2025-07-21 |
